Schedule from MS Project, 2014-08-25 to 2014-09-19, costs in ¥, A marks actual dates.
Microsoft

## Calendars

- 标准: Mon-Fri 08:00-12:00, 13:00-17:00; Sat-Sun off. Exceptions (off unless hours are given): 2014-09-08 (中秋).

## Resources

| Resource | Rate |
| --- | --- |
| yzp | 50 |
| czg |  |
| zkk |  |
| lxl |  |

## Schedule

| ID | WBS | Task | Type | Duration | Start | Finish | Predecessors | Complete | Remaining | Actual finish | Baseline start | Baseline finish | Baseline duration | Total slack | Resources | Work | Actual work | Cost | Actual cost |
| --- | --- | --- | --- | --- | --- | --- | --- | --- | --- | --- | --- | --- | --- | --- | --- | --- | --- | --- | --- |
| 1 | 1 | **前期工作** |  | 3.88d | 2014-08-25 09:00 A | 2014-08-28 17:00 A |  | 100% |  |  | 2014-08-25 09:00 | 2014-08-29 09:00 | 4d |  |  | 28h | 28h | 1,400 | 1,400 |
| 2 | 1.1 | 0.1 确定项目范围 | manual | 0.5d | 2014-08-25 09:00 A | 2014-08-25 14:00 A |  | 100% |  |  | 2014-08-25 09:00 | 2014-08-25 14:00 | 0.5d |  | yzp | 4h | 4h | 200 | 200 |
| 3 | 1.2 | 0.4 界面挑选 | manual | 0.5d | 2014-08-25 09:00 A | 2014-08-25 14:00 A |  | 100% |  |  | 2014-08-25 09:00 | 2014-08-25 14:00 | 0.5d |  | yzp | 4h | 4h | 200 | 200 |
| 4 | 1.3 | 0.6 工作分解-字典 | manual | 1d | 2014-08-26 09:00 A | 2014-08-26 18:00 A |  | 100% |  |  | 2014-08-26 09:00 | 2014-08-26 18:00 | 1d |  | yzp | 8h | 8h | 400 | 400 |
| 5 | 1.4 | 0.2 概要设计（数据库结构 ，对象实体关系 ，模块描述） | manual | 0.5d | 2014-08-27 09:00 A | 2014-08-27 14:00 A |  | 100% |  |  | 2014-08-27 09:00 | 2014-08-27 14:00 | 0.5d |  | yzp | 4h | 4h | 200 | 200 |
| 6 | 1.5 | 0.5 后台框架搭建 | manual | 1d | 2014-08-28 08:00 A | 2014-08-28 17:00 A | 5 | 100% |  |  | 2014-08-28 09:00 | 2014-08-29 09:00 | 1d |  | yzp | 8h | 8h | 400 | 400 |
| 7 | 2 | **1部门管理** |  | 3.5d | 2014-09-01 09:00 A | 2014-09-04 14:00 | 6 | 83% | 0.58d |  | 2014-09-01 09:00 | 2014-09-04 14:00 | 3.5d | 0d |  | 24h | 20h | 1,200 | 1,000 |
| 8 | 2.1 | 1.1 新建子部门 | manual | 1d | 2014-09-01 09:00 A | 2014-09-01 18:00 A |  | 100% |  |  | 2014-09-01 09:00 | 2014-09-02 18:00 | 2d |  | yzp | 8h | 8h | 400 | 400 |
| 9 | 2.2 | 1.2 显示子部门列表 | manual | 0.5d | 2014-09-01 18:00 A | 2014-09-01 22:00 A |  | 100% |  |  | 2014-09-03 09:00 | 2014-09-03 14:00 | 0.5d |  | yzp | 4h | 4h | 200 | 200 |
| 10 | 2.3 | 1.3 删除部门 | manual | 0.5d | 2014-09-03 09:00 A | 2014-09-03 14:00 A |  | 100% |  |  | 2014-09-03 09:00 | 2014-09-03 14:00 | 0.5d |  | yzp | 4h | 4h | 200 | 200 |
| 11 | 2.4 | 1.4 修改部门 | manual | 0.5d | 2014-09-02 09:00 A | 2014-09-02 14:00 A |  | 100% |  |  | 2014-09-04 09:00 | 2014-09-04 14:00 | 0.5d |  | yzp | 4h | 4h | 200 | 200 |
| 12 | 2.5 | 1.6 修改当前部门 | manual | 0.5d | 2014-09-04 09:00 | 2014-09-04 14:00 |  |  |  |  | 2014-09-04 09:00 | 2014-09-04 14:00 | 0.5d |  | yzp | 4h |  | 200 |  |
| 13 | 3 | **2用户管理** |  | 1d | 2014-09-04 09:00 A | 2014-09-04 18:00 | 7 | 100% |  | 2014-09-04 11:00 | 2014-09-05 09:00 | 2014-09-09 14:00 | 1.5d |  |  | 8h | 8h | 240 | 240 |
| 14 | 3.1 | 2.1 新建用户 | manual | 0.25d | 2014-09-04 09:00 A | 2014-09-04 11:00 A |  | 100% |  |  | 2014-09-05 09:00 | 2014-09-05 14:00 | 0.5d |  | zkk | 2h | 2h | 60 | 60 |
| 15 | 3.2 | 2.2 显示部门用户列表 | manual | 0.25d | 2014-09-04 09:00 A | 2014-09-04 11:00 A |  | 100% |  |  | 2014-09-05 09:00 | 2014-09-05 14:00 | 0.5d |  | zkk | 2h | 2h | 60 | 60 |
| 16 | 3.3 | 2.3 删除用户 | manual | 0.25d | 2014-09-04 09:00 A | 2014-09-04 11:00 A |  | 100% |  |  | 2014-09-09 09:00 | 2014-09-09 14:00 | 0.5d |  | zkk | 2h | 2h | 60 | 60 |
| 17 | 3.4 | 2.4 修改用户 | manual | 0.25d | 2014-09-04 09:00 A | 2014-09-04 11:00 A |  | 100% |  |  | 2014-09-09 09:00 | 2014-09-09 14:00 | 0.5d |  | zkk | 2h | 2h | 60 | 60 |
| 18 | 4 | **3角色管理** |  | 1d | 2014-09-03 09:00 A | 2014-09-03 18:00 | 7 | 100% |  | 2014-09-03 11:00 | 2014-09-05 09:00 | 2014-09-09 14:00 | 1.5d |  |  | 8h | 8h | 400 | 400 |
| 19 | 4.1 | 3.1 新建角色 | manual | 0.25d | 2014-09-03 09:00 A | 2014-09-03 11:00 A |  | 100% |  |  | 2014-09-05 09:00 | 2014-09-05 14:00 | 0.5d |  | yzp | 2h | 2h | 100 | 100 |
| 20 | 4.2 | 3.2 显示部门角色列表 | manual | 0.25d | 2014-09-03 09:00 A | 2014-09-03 11:00 A |  | 100% |  |  | 2014-09-05 09:00 | 2014-09-05 14:00 | 0.5d |  | yzp | 2h | 2h | 100 | 100 |
| 21 | 4.3 | 3.3 删除角色 | manual | 0.25d | 2014-09-03 09:00 A | 2014-09-03 11:00 A |  | 100% |  |  | 2014-09-09 09:00 | 2014-09-09 14:00 | 0.5d |  | yzp | 2h | 2h | 100 | 100 |
| 22 | 4.4 | 3.4 修改角色 | manual | 0.25d | 2014-09-03 09:00 A | 2014-09-03 11:00 A |  | 100% |  |  | 2014-09-09 09:00 | 2014-09-09 14:00 | 0.5d |  | yzp | 2h | 2h | 100 | 100 |
| 23 | 5 | **4 功能项管理** |  | 4d | 2014-09-05 09:00 | 2014-09-11 18:00 | 7 |  |  |  | 2014-09-05 09:00 | 2014-09-11 14:00 | 3.5d |  |  | 32h |  | 1,600 |  |
| 24 | 5.1 | 4.1 新增功能项 | manual | 2d | 2014-09-05 09:00 | 2014-09-10 09:00 |  |  |  |  | 2014-09-05 09:00 | 2014-09-10 09:00 | 2d |  | czg | 16h |  | 800 |  |
| 25 | 5.2 | 4.4 修改功能项 | manual | 1d | 2014-09-10 09:00 | 2014-09-10 18:00 |  |  |  |  | 2014-09-10 09:00 | 2014-09-10 18:00 | 1d |  | czg | 8h |  | 400 |  |
| 26 | 5.3 | 4.2 显示功能树 | manual | 0.5d | 2014-09-11 09:00 | 2014-09-11 14:00 |  |  |  |  | 2014-09-11 09:00 | 2014-09-11 14:00 | 0.5d |  | czg | 4h |  | 200 |  |
| 27 | 5.4 | 4.3 删除功能项 | manual | 0.5d | 2014-09-11 09:00 | 2014-09-11 14:00 |  |  |  |  | 2014-09-11 09:00 | 2014-09-11 14:00 | 0.5d |  | czg | 4h |  | 200 |  |

| ID | WBS | Task | Type | Duration | Start | Finish | Predecessors | Complete | Baseline start | Baseline finish | Baseline duration | Total slack | Resources | Work | Actual work | Cost | Actual cost |
| --- | --- | --- | --- | --- | --- | --- | --- | --- | --- | --- | --- | --- | --- | --- | --- | --- | --- |
| 28 | 6 | **5 权限管理** |  | 3.5d | 2014-09-05 09:00 A | 2014-09-11 14:00 A | 7, 13, 18, 23 | 100% | 2014-09-05 09:00 | 2014-09-12 09:00 | 4d |  |  | 32h | 32h | 1,600 | 1,600 |
| 29 | 6.1 | 5.1 设置角色 功能权限 | manual | 1.5d | 2014-09-05 09:00 A | 2014-09-09 14:00 A |  | 100% | 2014-09-05 09:00 | 2014-09-09 14:00 | 1.5d |  | yzp | 12h | 12h | 600 | 600 |
| 30 | 6.2 | 5.2 显示角色功能权限 | manual | 1.5d | 2014-09-10 09:00 A | 2014-09-11 14:00 A |  | 100% | 2014-09-10 09:00 | 2014-09-11 14:00 | 1.5d |  | yzp | 12h | 12h | 600 | 600 |
| 31 | 6.3 | 5.5 用户分配角色 | manual | 0.5d | 2014-09-05 09:00 A | 2014-09-05 14:00 A |  | 100% | 2014-09-11 09:00 | 2014-09-12 09:00 | 1d |  | yzp | 4h | 4h | 200 | 200 |
| 32 | 6.4 | 5.6 查看用户分配角色 | manual | 0.5d | 2014-09-05 09:00 A | 2014-09-05 14:00 A |  | 100% |  |  |  |  | yzp | 4h | 4h | 200 | 200 |
| 33 | 7 | 6 接口开发 | manual | 2d | 2014-09-11 09:00 | 2014-09-12 18:00 |  |  | 2014-09-11 09:00 | 2014-09-12 18:00 | 2d |  | yzp | 16h |  | 800 |  |
| 34 | 8 | **7 业务系统整合** |  | 4.88d | 2014-09-15 09:00 | 2014-09-19 18:00 |  |  | 2014-09-15 09:00 | 2014-09-19 18:00 | 4.88d | 0d |  | 40h |  | 1,999.96 |  |
| 35 | 8.1 | 7.1 功能权限整合 | manual | 5d | 2014-09-15 09:00 | 2014-09-19 18:00 |  |  | 2014-09-15 09:00 | 2014-09-19 18:00 | 5d |  | yzp | 40h |  | 1,999.96 |  |
| 36 | 9 | **计划外工作** |  | 1.5d | 2014-09-03 09:00 A | 2014-09-04 14:00 A |  | 100% |  |  |  |  |  | 5h | 5h | 250 | 250 |
| 37 | 9.1 | 相关技术研究（弹出框、页面教研） | manual | 0.5d | 2014-09-03 09:00 A | 2014-09-03 14:00 A |  | 100% |  |  |  |  | yzp | 4h | 4h | 200 | 200 |
| 38 | 9.2 | 样式调整（列表页面数据较多的情况，居中显示比较乱，进行调整） | manual | 0.5d | 2014-09-04 09:00 A | 2014-09-04 14:00 A |  | 100% |  |  |  |  | yzp | 1h | 1h | 50 | 50 |
