Schedule from MS Project, 2014-07-01 to 2015-02-13, A marks actual dates.
Microsoft

## Calendars

- 标准: Mon-Fri 08:00-12:00, 13:00-17:00; Sat-Sun off.

## Schedule

| ID | WBS | Task | Type | Duration | Start | Finish | Complete | Remaining | Actual start | Actual finish | Total slack |
| --- | --- | --- | --- | --- | --- | --- | --- | --- | --- | --- | --- |
| 1 | 1 | EWAY产品--组织管理 | manual | 1d? | 2014-10-01 | 2014-10-02 |  |  |  |  |  |
| 2 | 2 | **第一阶段工作（目标：功能精简、满足北京项目）** |  | 50d | 2014-07-01 A | 2014-09-09 | 100% |  |  | 2014-08-26 |  |
| 3 | 2.1 | 1.基础维护功能（已基本满足北京项目的要求） | manual | 40d | 2014-07-01 A | 2014-08-26 A | 100% |  |  |  |  |
| 4 | 2.2 | 2.组织机构接口 | manual | 10d | 2014-07-01 A | 2014-07-15 A | 100% |  |  |  |  |
| 5 | 3 | **第二阶段（目标：补充现有功能、提高可用性、支持浦东酒局项目）：** |  | 47d | 2014-12-10 A | 2015-02-13 | 20% | 37.6d |  |  | 0d |
| 6 | 3.1 | **1. 第一阶段功能增强** |  | 26d | 2014-12-15 | 2015-01-19 | 36% | 16.71d | 2014-12-10 |  |  |
| 7 | 3.1.1 | **1.功能项维护** |  | 13d | 2014-12-10 A | 2014-12-26 A | 100% |  |  |  |  |
| 8 | 3.1.1.1 | 新增功能项 | manual | 3d | 2014-12-10 A | 2014-12-15 A | 100% |  |  |  |  |
| 9 | 3.1.1.2 | 修改功能项 | manual | 4d | 2014-12-16 A | 2014-12-22 A | 100% |  |  |  |  |
| 10 | 3.1.1.3 | 删除功能项 | manual | 3d | 2014-12-23 A | 2014-12-26 A | 100% |  |  |  |  |
| 11 | 3.1.2 | **2.添加一些可用性的功能，方便操作** |  | 14d | 2014-12-29 | 2015-01-15 |  |  |  |  |  |
| 12 | 3.1.2.1 | 用户排序功能 | manual | 8d | 2014-12-29 | 2015-01-08 |  |  |  |  |  |
| 13 | 3.1.2.2 | 分页功能增强（添加数量、样式优化） | manual | 6d | 2014-12-29 | 2015-01-06 |  |  |  |  |  |
| 14 | 3.1.3 | 北京项目-URL接口开发(新增) | manual | 4d | 2015-01-06 | 2015-01-09 |  |  |  |  |  |
| 15 | 3.2 | **2. 浦东酒局项目整合** |  | 21d | 2015-01-15 | 2015-02-13 |  |  |  |  |  |
| 16 | 3.2.1 | 1.了解相关的业务需求 | manual | 3d | 2015-01-15 | 2015-01-20 |  |  |  |  |  |
| 17 | 3.2.2 | 2. 组织机构相应调整（包括相应接口） | manual | 8d | 2015-01-15 | 2015-01-27 |  |  |  |  |  |
| 18 | 3.2.3 | 3. 整合工作 | manual | 10d | 2015-01-15 | 2015-01-29 |  |  |  |  |  |

Notes:
- 1: 第一阶段工作（目标：功能精简、满足北京项目）
